# 喷砂油漆 Sandblasting and painting work

Schedule from a web Gantt chart, 2026-04-07 to 2026-05-17.
Every day is a working day

## Schedule

| ID | WBS | Task | Duration | Start | Finish | Predecessors | Complete | Status | inPeople |
| --- | --- | --- | --- | --- | --- | --- | --- | --- | --- |
| 2 | 1 | **BOX11、12** | 12d | 2026-04-07 | 2026-04-18 |  | 38% | done |  |
| 3 | 1.1 | 初喷 Initial sandblasting | 1d | 2026-04-07 | 2026-04-07 |  | 100% | done | 王乃强 |
| 4 | 1.2 | 返修 Defect repair process | 4d | 2026-04-08 | 2026-04-11 | 3 | 100% | done | 李元明 |
| 5 | 1.3 | 复喷 Second sandblasting process | 1d | 2026-04-12 | 2026-04-12 | 4 | 100% | done | 王乃强 |
| 6 | 1.4 | 底漆-1号 Priming coat - Room 1 of Paint Warehouse | 2d | 2026-04-13 | 2026-04-14 | 5 | 100% | done | 王乃强 |
| 7 | 1.5 | 中间漆-1号 Intermediate coat- Room 1 of Paint Warehouse | 2d | 2026-04-15 | 2026-04-16 | 6 | 100% | done | 王乃强 |
| 8 | 1.6 | 面漆-1号 Final coat- Room 1 of Paint Warehouse | 2d | 2026-04-17 | 2026-04-18 | 7 | 100% | done | 王乃强 |
| 9 | 2 | **BOX6、7** | 12d | 2026-04-07 | 2026-04-18 |  | 100% |  |  |
| 10 | 2.1 | 初喷 Initial sandblasting | 1d | 2026-04-07 | 2026-04-07 |  | 100% | done | 王乃强 |
| 11 | 2.2 | 返修 Defect repair proces | 4d | 2026-04-08 | 2026-04-11 | 10 | 100% | done | 李元明 |
| 12 | 2.3 | 复喷 Second sandblasting process | 1d | 2026-04-12 | 2026-04-12 | 11 | 100% | done | 王乃强 |
| 13 | 2.4 | 底漆-2号 Priming coat - Room 2 of Paint Warehouse | 2d | 2026-04-13 | 2026-04-14 | 12 | 100% | done | 王乃强 |
| 14 | 2.5 | 中间漆-2号 Intermediate coat- Room 2 of Paint Warehouse | 2d | 2026-04-15 | 2026-04-16 | 13 | 100% | done | 王乃强 |
| 15 | 2.6 | 面漆-2号 Final coat- Room 2 of Paint Warehouse | 2d | 2026-04-17 | 2026-04-18 | 14 | 100% | done | 王乃强 |
| 16 | 3 | **BOX2、3** | 16d | 2026-04-08 | 2026-04-23 |  |  |  |  |
| 17 | 3.1 | 初喷 Initial sandblasting | 1d | 2026-04-08 | 2026-04-08 |  | 100% | done | 王乃强 |
| 18 | 3.2 | 返修 Defect repair proces | 2d | 2026-04-09 | 2026-04-10 | 17 |  |  | 李元明 |
| 19 | 3.3 | 复喷 Second sandblasting process | 1d | 2026-04-11 | 2026-04-11 | 18 |  | waiting | 王乃强 |
| 20 | 3.4 | 底漆-1号 Priming coat - Room 1 of Paint Warehouse | 2d | 2026-04-18 | 2026-04-19 | 19 |  | waiting | 王乃强 |
| 21 | 3.5 | 中间漆-1号 Intermediate coat- Room 1 of Paint Warehouse | 2d | 2026-04-20 | 2026-04-21 | 20 |  | waiting | 王乃强 |
| 22 | 3.6 | 面漆-1号 Final coat- Room 1 of Paint Warehouse | 2d | 2026-04-22 | 2026-04-23 | 21 |  | waiting | 王乃强 |
| 23 | 4 | **BOX18、19** | 16d | 2026-04-09 | 2026-04-24 |  |  | waiting |  |
| 24 | 4.1 | 初喷 Initial sandblasting | 1d | 2026-04-09 | 2026-04-09 |  |  | waiting | 王乃强 |
| 25 | 4.2 | 返修 Defect repair proces | 2d | 2026-04-11 | 2026-04-12 | 24 |  | waiting | 李元明 |
| 26 | 4.3 | 复喷 Second sandblasting process | 1d | 2026-04-13 | 2026-04-13 | 25 |  | waiting | 王乃强 |
| 27 | 4.4 | 底漆-2号 Priming coat - Room 2 of Paint Warehouse | 2d | 2026-04-19 | 2026-04-20 | 26 |  | waiting | 王乃强 |
| 28 | 4.5 | 中间漆-2号 Intermediate coat- Room 2 of Paint Warehouse | 2d | 2026-04-21 | 2026-04-22 | 27 |  | waiting | 王乃强 |
| 29 | 4.6 | 面漆-2号 Final coat- Room 2 of Paint Warehouse | 2d | 2026-04-23 | 2026-04-24 | 28 |  | waiting | 王乃强 |

Notes:
- 22: 第一次：见证点 First time: Witnessing point

| ID | WBS | Task | Duration | Start | Finish | Predecessors | Status | inPeople |
| --- | --- | --- | --- | --- | --- | --- | --- | --- |
| 30 | 5 | **BOX20、21** | 24d | 2026-04-12 | 2026-05-05 |  | waiting |  |
| 31 | 5.1 | 初喷 Initial sandblasting | 1d | 2026-04-12 | 2026-04-12 | 45 | waiting | 王乃强 |
| 32 | 5.2 | 返修 Defect repair proces | 2d | 2026-04-17 | 2026-04-18 | 31, 46 | waiting | 李元明 |
| 33 | 5.3 | 复喷 Second sandblasting process | 1d | 2026-04-19 | 2026-04-19 | 32 | waiting | 王乃强 |
| 34 | 5.4 | 底漆-1号 Priming coat - Room 1 of Paint Warehouse | 2d | 2026-04-30 | 2026-05-01 | 33 | waiting | 王乃强 |
| 35 | 5.5 | 中间漆-1号 Intermediate coat- Room 1 of Paint Warehouse | 2d | 2026-05-02 | 2026-05-03 | 34 | waiting | 王乃强 |
| 36 | 5.6 | 面漆-1号 Final coat- Room 1 of Paint Warehouse | 2d | 2026-05-04 | 2026-05-05 | 35 | waiting | 王乃强 |
| 37 | 6 | **BOX8、10** | 20d | 2026-04-10 | 2026-04-29 |  | waiting |  |
| 38 | 6.1 | 初喷 Initial sandblasting | 1d | 2026-04-10 | 2026-04-10 |  | waiting | 王乃强 |
| 39 | 6.2 | 返修 Defect repair proces | 2d | 2026-04-13 | 2026-04-14 | 38 | waiting | 李元明 |
| 40 | 6.3 | 复喷 Second sandblasting process | 1d | 2026-04-15 | 2026-04-15 | 39 | waiting | 王乃强 |
| 41 | 6.4 | 底漆-1号 Priming coat - Room 1 of Paint Warehouse | 2d | 2026-04-24 | 2026-04-25 | 40 | waiting | 王乃强 |
| 42 | 6.5 | 中间漆-1号 Intermediate coat- Room 1 of Paint Warehouse | 2d | 2026-04-26 | 2026-04-27 | 41 | waiting | 王乃强 |
| 43 | 6.6 | 面漆-1号 Final coat- Room 1 of Paint Warehouse | 2d | 2026-04-28 | 2026-04-29 | 42 | waiting | 王乃强 |
| 44 | 7 | **BOX14、1** | 20d | 2026-04-11 | 2026-04-30 |  | waiting |  |
| 45 | 7.1 | 初喷 Initial sandblasting | 1d | 2026-04-11 | 2026-04-11 | 38 | waiting | 王乃强 |
| 46 | 7.2 | 返修 Defect repair proces | 2d | 2026-04-15 | 2026-04-16 | 45, 39 | waiting | 李元明 |
| 47 | 7.3 | 复喷 Second sandblasting process | 1d | 2026-04-17 | 2026-04-17 | 46 | waiting | 王乃强 |
| 48 | 7.4 | 底漆-2号 Priming coat - Room 2 of Paint Warehouse | 2d | 2026-04-25 | 2026-04-26 | 47, 29 | waiting | 王乃强 |
| 49 | 7.5 | 中间漆-2号 Intermediate coat- Room 2 of Paint Warehouse | 2d | 2026-04-27 | 2026-04-28 | 48 | waiting | 王乃强 |
| 50 | 7.6 | 面漆-2号 Final coat- Room 2 of Paint Warehouse | 2d | 2026-04-29 | 2026-04-30 | 49 | waiting | 王乃强 |
| 51 | 8 | **BOX4、5** | 24d | 2026-04-13 | 2026-05-06 |  | waiting |  |
| 52 | 8.1 | 初喷 Initial sandblasting | 1d | 2026-04-13 | 2026-04-13 | 31 | waiting | 王乃强 |
| 53 | 8.2 | 返修 Defect repair proces | 2d | 2026-04-19 | 2026-04-20 | 52, 32 | waiting | 李元明 |
| 54 | 8.3 | 复喷 Second sandblasting process | 1d | 2026-04-21 | 2026-04-21 | 53 | waiting | 王乃强 |
| 55 | 8.4 | 底漆-2号 Priming coat - Room 2 of Paint Warehouse | 2d | 2026-05-01 | 2026-05-02 | 54, 50 | waiting | 王乃强 |
| 56 | 8.5 | 中间漆-2号 Intermediate coat- Room 2 of Paint Warehouse | 2d | 2026-05-03 | 2026-05-04 | 55 | waiting | 王乃强 |
| 57 | 8.6 | 面漆-2号 Final coat- Room 2 of Paint Warehouse | 2d | 2026-05-05 | 2026-05-06 | 56 | waiting | 王乃强 |

Notes:
- 36: 第二次：见证点Second time: Witnessing point

| ID | WBS | Task | Type | Duration | Start | Finish | Predecessors | Status | inPeople |
| --- | --- | --- | --- | --- | --- | --- | --- | --- | --- |
| 58 | 9 | **BOX13、15** |  | 28d | 2026-04-14 | 2026-05-11 |  | waiting |  |
| 59 | 9.1 | 初喷 Initial sandblasting |  | 1d | 2026-04-14 | 2026-04-14 | 52 | waiting | 王乃强 |
| 60 | 9.2 | 返修 Defect repair proces |  | 2d | 2026-04-21 | 2026-04-22 | 59, 53 | waiting | 李元明 |
| 61 | 9.3 | 复喷 Second sandblasting process |  | 1d | 2026-04-23 | 2026-04-23 | 60 | waiting | 王乃强 |
| 62 | 9.4 | 底漆-1号 Priming coat - Room 1 of Paint Warehouse |  | 2d | 2026-05-06 | 2026-05-07 | 61, 36 | waiting | 王乃强 |
| 63 | 9.5 | 中间漆-1号 Intermediate coat- Room 1 of Paint Warehouse |  | 2d | 2026-05-08 | 2026-05-09 | 62 | waiting | 王乃强 |
| 64 | 9.6 | 面漆-1号 Final coat- Room 1 of Paint Warehouse |  | 2d | 2026-05-10 | 2026-05-11 | 63 | waiting | 王乃强 |
| 65 | 10 | **BOX16、17** |  | 28d | 2026-04-15 | 2026-05-12 |  | waiting |  |
| 66 | 10.1 | 初喷 Initial sandblasting |  | 1d | 2026-04-15 | 2026-04-15 | 59 | waiting | 王乃强 |
| 67 | 10.2 | 返修 Defect repair proces |  | 2d | 2026-04-23 | 2026-04-24 | 66, 60 | waiting | 李元明 |
| 68 | 10.3 | 复喷 Second sandblasting process |  | 1d | 2026-04-25 | 2026-04-25 | 67 | waiting | 王乃强 |
| 69 | 10.4 | 底漆-2号 Priming coat - Room 2 of Paint Warehouse |  | 2d | 2026-05-07 | 2026-05-08 | 68, 57 | waiting | 王乃强 |
| 70 | 10.5 | 中间漆-2号 Intermediate coat- Room 2 of Paint Warehouse |  | 2d | 2026-05-09 | 2026-05-10 | 69 | waiting | 王乃强 |
| 71 | 10.6 | 面漆-2号 Final coat- Room 2 of Paint Warehouse |  | 2d | 2026-05-11 | 2026-05-12 | 70 | waiting | 王乃强 |
| 72 | 11 | **BOX9** |  | 32d | 2026-04-16 | 2026-05-17 |  | waiting |  |
| 73 | 11.1 | 初喷 Initial sandblasting |  | 1d | 2026-04-16 | 2026-04-16 | 66 | waiting | 王乃强 |
| 74 | 11.2 | 返修 Defect repair proces |  | 2d | 2026-04-25 | 2026-04-26 | 73, 67 | waiting | 李元明 |
| 75 | 11.3 | 复喷 Second sandblasting process |  | 1d | 2026-04-27 | 2026-04-27 | 74 | waiting | 王乃强 |
| 76 | 11.4 | 底漆-1号 Priming coat - Room 1 of Paint Warehouse |  | 2d | 2026-05-12 | 2026-05-13 | 75, 64 | waiting | 王乃强 |
| 77 | 11.5 | 中间漆-1号 Intermediate coat- Room 1 of Paint Warehouse |  | 2d | 2026-05-14 | 2026-05-15 | 76 | waiting | 王乃强 |
| 78 | 11.6 | 面漆-1号 Final coat- Room 1 of Paint Warehouse | fixed start | 2d | 2026-05-16 | 2026-05-17 | 77 | waiting | 王乃强 |

Notes:
- 78: 第三次：见证点Third time: Witnessing Point
